Schedule from MS Project, 2019-04-29 to 2019-06-11, status date 2019-06-17, 5 hours a day, costs in €, A marks actual dates.

## Calendars

- Standard: Mon-Fri 08:00-12:00, 13:00-17:00; Sat-Sun off.

## Resources

| Resource | Rate |
| --- | --- |
| Daniel | 5 |
| Diogo | 5 |

## Schedule

| ID | WBS | Task | Duration | Start | Finish | Predecessors | Complete | Remaining | Baseline 1 start | Baseline 1 finish | Total slack | Constraint | Resources | Work | Actual work | Cost | Actual cost | Story Points |
| --- | --- | --- | --- | --- | --- | --- | --- | --- | --- | --- | --- | --- | --- | --- | --- | --- | --- | --- |
| 1 | 1 | **Projeto MDS** | 49.61d | 2019-04-29 08:00 A | 2019-06-11 08:02 |  | 99% | 0d | 2019-04-29 08:00 | 2019-06-11 08:02 | 0d |  |  | 238.97h | 238.97h | 1,194.83 | 1,194.83 |  |
| 2 | 1.1 | **Inicio Projeto** | 0.1d | 2019-04-29 08:00 A | 2019-04-29 08:30 A |  | 100% |  | 2019-04-29 08:00 | 2019-04-29 08:30 |  |  |  | 1h | 1h | 5 | 5 |  |
| 3 | 1.1.1 | Reunião Inicial | 30min | 2019-04-29 08:00 A | 2019-04-29 08:30 A |  | 100% |  | 2019-04-29 08:00 | 2019-04-29 08:30 |  |  | Daniel; Diogo | 1h | 1h | 5 | 5 | 20 |
| 4 | 1.2 | **Planeamento Projeto** | 5.83d | 2019-04-29 08:30 A | 2019-05-02 14:40 A |  | 100% |  | 2019-04-29 08:30 | 2019-05-02 14:40 |  |  |  | 52.33h | 52.33h | 261.67 | 261.67 |  |
| 5 | 1.2.1 | **Build Backlog** | 1.3d | 2019-04-29 08:30 A | 2019-04-29 16:00 A | 2 | 100% |  | 2019-04-29 08:30 | 2019-04-29 16:00 |  |  |  | 7h | 7h | 35 | 35 |  |
| 6 | 1.2.1.1 | Determinar Requerimentos do Cliente | 30min | 2019-04-29 08:30 A | 2019-04-29 09:00 A | 2 | 100% |  | 2019-04-29 08:30 | 2019-04-29 09:00 |  |  | Daniel; Diogo | 1h | 1h | 5 | 5 | 20 |
| 7 | 1.2.1.2 | Criar User Stories | 4h | 2019-04-29 09:00 A | 2019-04-29 14:00 A | 6 | 100% |  | 2019-04-29 09:00 | 2019-04-29 14:00 |  |  | Daniel | 4h | 4h | 20 | 20 | 30 |
| 8 | 1.2.1.3 | Priorizar convenientemente User Stories | 2h | 2019-04-29 14:00 A | 2019-04-29 16:00 A | 7 | 100% |  | 2019-04-29 14:00 | 2019-04-29 16:00 |  |  | Diogo | 2h | 2h | 10 | 10 | 20 |
| 9 | 1.2.2 | Definir o numero de Sprints | 10min | 2019-04-29 16:00 A | 2019-04-29 16:10 A | 5 | 100% |  | 2019-04-29 16:00 | 2019-04-29 16:10 |  |  | Daniel; Diogo | 0.33h | 0.33h | 1.67 | 1.67 | 10 |
| 10 | 1.2.3 | Definir Plano de Comunicação | 15min | 2019-04-29 16:10 A | 2019-04-29 16:25 A | 9 | 100% |  | 2019-04-29 16:10 | 2019-04-29 16:25 |  |  | Daniel; Diogo | 0.5h | 0.5h | 2.5 | 2.5 | 10 |
| 11 | 1.2.4 | Definir Metodologias de trabalho | 30min | 2019-04-29 16:25 A | 2019-04-29 16:55 A | 10 | 100% |  | 2019-04-29 16:25 | 2019-04-29 16:55 |  |  | Daniel; Diogo | 1h | 1h | 5 | 5 | 10 |
| 12 | 1.2.5 | Identificação dos Riscos do Projeto | 45min | 2019-04-29 16:55 A | 2019-04-30 08:40 A | 11 | 100% |  | 2019-04-29 16:55 | 2019-04-30 08:40 |  |  | Daniel; Diogo | 1.5h | 1.5h | 7.5 | 7.5 | 30 |
| 13 | 1.2.6 | Analise dos Riscos do Projeto | 30min | 2019-04-30 08:40 A | 2019-04-30 09:10 A | 12 | 100% |  | 2019-04-30 08:40 | 2019-04-30 09:10 |  |  | Daniel; Diogo | 1h | 1h | 5 | 5 | 20 |
| 14 | 1.2.7 | Possiveis soluções para os Riscos do Projeto | 30min | 2019-04-30 09:10 A | 2019-04-30 09:40 A | 13 | 100% |  | 2019-04-30 09:10 | 2019-04-30 09:40 |  |  | Daniel; Diogo | 1h | 1h | 5 | 5 | 30 |
| 15 | 1.2.8 | Relatorio de Planeamento | 4d | 2019-04-30 09:40 A | 2019-05-02 14:40 A | 5, 9, 10, 11, 12, 13, 14 | 100% |  | 2019-04-30 09:40 | 2019-05-02 14:40 |  |  | Daniel | 20h | 20h | 100 | 100 | 40 |
| 16 | 1.2.9 | Relatorio de Especificacao de Requisitos | 4d | 2019-04-30 09:40 A | 2019-05-02 14:40 A | 5, 9, 10, 11, 12, 13, 14 | 100% |  | 2019-04-30 09:40 | 2019-05-02 14:40 |  |  | Diogo | 20h | 20h | 100 | 100 | 40 |
| 17 | 1.3 | **Build Phase** | 41.4d | 2019-05-06 09:00 A | 2019-06-10 17:00 |  | 99% | 0d | 2019-05-06 09:00 | 2019-06-10 17:00 |  |  |  | 175.57h | 175.57h | 877.83 | 877.83 |  |
| 18 | 1.3.1 | Weekly Scrum 1 | 30min | 2019-05-06 09:00 A | 2019-05-06 09:30 A |  | 100% |  | 2019-05-06 09:00 | 2019-05-06 09:30 |  | start no earlier than 2019-05-06 09:00 | Daniel; Diogo | 1h | 1h | 5 | 5 | 10 |
| 19 | 1.3.2 | Weekly Scrum 2 | 30min | 2019-05-13 11:00 A | 2019-05-13 11:30 A | 18 | 100% |  | 2019-05-13 11:00 | 2019-05-13 11:30 |  | start no earlier than 2019-05-13 11:00 | Daniel; Diogo | 1h | 1h | 5 | 5 | 10 |
| 20 | 1.3.3 | Weekly Scrum 3 | 30min | 2019-05-20 08:00 A | 2019-05-20 08:30 A | 19 | 100% |  | 2019-05-20 08:00 | 2019-05-20 08:30 |  | start no earlier than 2019-05-20 08:00 | Daniel; Diogo | 1h | 1h | 5 | 5 | 10 |
| 21 | 1.3.4 | Weekly Scrum 4 | 30min | 2019-05-27 08:00 A | 2019-05-27 08:30 A | 20 | 100% |  | 2019-05-27 08:00 | 2019-05-27 08:30 |  | start no earlier than 2019-05-27 08:00 | Daniel; Diogo | 1h | 1h | 5 | 5 | 10 |
| 22 | 1.3.5 | Weekly Scrum 5 | 30min | 2019-06-03 08:00 A | 2019-06-03 08:30 A | 21 | 100% |  | 2019-06-03 08:00 | 2019-06-03 08:30 |  | start no earlier than 2019-06-03 08:00 | Daniel; Diogo | 1h | 1h | 5 | 5 | 10 |
| 23 | 1.3.6 | Weekly Scrum 6 | 30min | 2019-06-10 08:00 A | 2019-06-10 08:30 A | 22 | 100% |  | 2019-06-10 08:00 | 2019-06-10 08:30 |  | start no earlier than 2019-06-10 08:00 | Daniel; Diogo | 1h | 1h | 5 | 5 | 10 |
| 24 | 1.3.7 | **Sprint 1 - Dia 05/05 até 27/05** | 11.01d | 2019-05-06 09:00 A | 2019-05-15 08:02 |  | 99% | 0d | 2019-05-06 09:30 | 2019-05-16 10:02 | 30.4d |  |  | 86h | 86h | 430 | 430 |  |
| 25 | 1.3.7.1 | Planeamento da Sprint | 2h | 2019-05-06 09:30 A | 2019-05-06 11:30 A | 18 | 100% |  | 2019-05-06 09:30 | 2019-05-06 11:30 |  |  | Diogo; Daniel | 4h | 4h | 20 | 20 | 15 |

| ID | WBS | Task | Duration | Start | Finish | Predecessors | Complete | Baseline 1 start | Baseline 1 finish | Constraint | Resources | Work | Actual work | Cost | Actual cost | Story Points |
| --- | --- | --- | --- | --- | --- | --- | --- | --- | --- | --- | --- | --- | --- | --- | --- | --- |
| 26 | 1.3.7.2 | **User Story 1 - Entity Framework** | 2d | 2019-05-06 11:30 A | 2019-05-07 14:30 A |  | 100% | 2019-05-06 11:30 | 2019-05-07 14:30 |  |  | 10h | 10h | 50 | 50 |  |
| 27 | 1.3.7.2.1 | Criação das Classes com a Entity Framework | 1.5d | 2019-05-06 11:30 A | 2019-05-07 11:00 A | 25 | 100% | 2019-05-06 11:30 | 2019-05-07 11:00 |  | Daniel | 7.5h | 7.5h | 37.5 | 37.5 | 60 |
| 28 | 1.3.7.2.2 | Ligação das Classes entre Si | 0.5d | 2019-05-07 11:00 A | 2019-05-07 14:30 A | 27 | 100% | 2019-05-07 11:00 | 2019-05-07 14:30 |  | Daniel | 2.5h | 2.5h | 12.5 | 12.5 | 50 |
| 29 | 1.3.7.3 | **User Story 2 - Form Menu_Inicial** | 1.8d | 2019-05-07 14:30 A | 2019-05-08 15:30 A |  | 100% | 2019-05-07 14:30 | 2019-05-08 15:30 |  |  | 9h | 9h | 45 | 45 |  |
| 30 | 1.3.7.3.1 | Criação do Form | 30min | 2019-05-07 14:30 A | 2019-05-07 15:00 A | 26 | 100% | 2019-05-07 14:30 | 2019-05-07 15:00 |  | Diogo | 0.5h | 0.5h | 2.5 | 2.5 | 15 |
| 31 | 1.3.7.3.2 | Criação do UI | 1h | 2019-05-07 15:00 A | 2019-05-07 16:00 A | 30 | 100% | 2019-05-07 15:00 | 2019-05-07 16:00 |  | Diogo | 1h | 1h | 5 | 5 | 15 |
| 32 | 1.3.7.3.3 | Implementar Codigo Necessário Para Transição de Forms | 1d | 2019-05-07 16:00 A | 2019-05-08 12:00 A | 31 | 100% | 2019-05-07 16:00 | 2019-05-08 12:00 |  | Diogo | 5h | 5h | 25 | 25 | 30 |
| 33 | 1.3.7.3.4 | Testar Funcionalidades | 2h | 2019-05-08 13:00 A | 2019-05-08 15:00 A | 32 | 100% | 2019-05-08 13:00 | 2019-05-08 15:00 |  | Diogo | 2h | 2h | 10 | 10 | 20 |
| 34 | 1.3.7.3.5 | Refatoração do Código | 30min | 2019-05-08 15:00 A | 2019-05-08 15:30 A | 33 | 100% | 2019-05-08 15:00 | 2019-05-08 15:30 |  | Diogo | 0.5h | 0.5h | 2.5 | 2.5 | 10 |
| 35 | 1.3.7.4 | **User Story 3 -> 8 - Form Gestao_Clientes** | 6.2d | 2019-05-08 15:30 A | 2019-05-14 14:30 A |  | 100% | 2019-05-08 15:30 | 2019-05-14 14:30 |  |  | 30.5h | 30.5h | 152.5 | 152.5 |  |
| 36 | 1.3.7.4.1 | **User Story 3 - Design do Form Gestao_Clientes** | 0.4d | 2019-05-08 15:30 A | 2019-05-09 08:30 A |  | 100% | 2019-05-08 15:30 | 2019-05-09 08:30 |  |  | 2h | 2h | 10 | 10 |  |
| 37 | 1.3.7.4.1.1 | Criação do Form | 30min | 2019-05-08 15:30 A | 2019-05-08 16:00 A | 29 | 100% | 2019-05-08 15:30 | 2019-05-08 16:00 |  | Diogo | 0.5h | 0.5h | 2.5 | 2.5 | 15 |
| 38 | 1.3.7.4.1.2 | Implementação do UI | 1h | 2019-05-08 16:00 A | 2019-05-08 17:00 A | 37 | 100% | 2019-05-08 16:00 | 2019-05-08 17:00 |  | Daniel | 1h | 1h | 5 | 5 | 15 |
| 39 | 1.3.7.4.1.3 | Implementar Butões Necessários | 30min | 2019-05-09 08:00 A | 2019-05-09 08:30 A | 38 | 100% | 2019-05-09 08:00 | 2019-05-09 08:30 |  | Daniel | 0.5h | 0.5h | 2.5 | 2.5 | 20 |
| 40 | 1.3.7.4.2 | **User Story 4 - Adicionar Cliente** | 1d | 2019-05-09 08:30 A | 2019-05-09 14:30 A |  | 100% | 2019-05-09 08:30 | 2019-05-09 14:30 |  |  | 5h | 5h | 25 | 25 |  |
| 41 | 1.3.7.4.2.1 | Implementação do código | 1d | 2019-05-09 08:30 A | 2019-05-09 14:30 A | 36 | 100% | 2019-05-09 08:30 | 2019-05-09 14:30 |  | Daniel | 5h | 5h | 25 | 25 | 30 |
| 42 | 1.3.7.4.3 | **User Story 5 - Editar Cliente** | 0.5d | 2019-05-09 14:30 A | 2019-05-09 17:00 A |  | 100% | 2019-05-09 14:30 | 2019-05-09 17:00 |  |  | 2.5h | 2.5h | 12.5 | 12.5 |  |
| 43 | 1.3.7.4.3.1 | Implementação do código | 0.5d | 2019-05-09 14:30 A | 2019-05-09 17:00 A | 41 | 100% | 2019-05-09 14:30 | 2019-05-09 17:00 |  | Daniel | 2.5h | 2.5h | 12.5 | 12.5 | 30 |
| 44 | 1.3.7.4.4 | **User Story 6 - Eliminar Cliente** | 0.4d | 2019-05-10 08:00 A | 2019-05-10 10:00 A |  | 100% | 2019-05-10 08:00 | 2019-05-10 10:00 |  |  | 2h | 2h | 10 | 10 |  |
| 45 | 1.3.7.4.4.1 | Verificação se o user pretende apagar os dados selecionados | 30min | 2019-05-10 08:00 A | 2019-05-10 08:30 A | 43 | 100% | 2019-05-10 08:00 | 2019-05-10 08:30 |  | Daniel | 0.5h | 0.5h | 2.5 | 2.5 | 20 |
| 46 | 1.3.7.4.4.2 | Implementação do código | 1.5h | 2019-05-10 08:30 A | 2019-05-10 10:00 A | 45 | 100% | 2019-05-10 08:30 | 2019-05-10 10:00 |  | Daniel | 1.5h | 1.5h | 7.5 | 7.5 | 30 |
| 47 | 1.3.7.4.5 | **User Story 7 - Guardar Dados Cliente** | 1d | 2019-05-10 10:00 A | 2019-05-10 16:00 A |  | 100% | 2019-05-10 10:00 | 2019-05-10 16:00 |  |  | 5h | 5h | 25 | 25 |  |
| 48 | 1.3.7.4.5.1 | Implementar ficheiro binário para guardar dados | 5h | 2019-05-10 10:00 A | 2019-05-10 16:00 A | 36, 40, 42, 44 | 100% | 2019-05-10 10:00 | 2019-05-10 16:00 |  | Daniel | 5h | 5h | 25 | 25 | 35 |
| 49 | 1.3.7.4.6 | **User Story 8 - Proteções e Correções de Erros** | 2.9d | 2019-05-10 16:00 A | 2019-05-14 14:30 A |  | 100% | 2019-05-10 16:00 | 2019-05-14 14:30 |  |  | 14h | 14h | 70 | 70 |  |
| 50 | 1.3.7.4.6.1 | Implementar proteções necessárias | 4h | 2019-05-10 16:00 A | 2019-05-13 11:00 A | 47 | 100% | 2019-05-10 16:00 | 2019-05-13 11:00 |  | Daniel | 4h | 4h | 20 | 20 | 30 |
| 51 | 1.3.7.4.6.2 | Garantir que os dados criados no Form são guardados | 1h | 2019-05-13 11:30 A | 2019-05-13 13:30 A | 50 | 100% | 2019-05-13 11:30 | 2019-05-13 13:30 | start no earlier than 2019-05-13 11:30 | Daniel | 1h | 1h | 5 | 5 | 15 |
| 52 | 1.3.7.4.6.3 | Testar Funcionalidades | 4h | 2019-05-13 13:30 A | 2019-05-14 08:30 A | 51 | 100% | 2019-05-13 13:30 | 2019-05-14 08:30 |  | Daniel | 4h | 4h | 20 | 20 | 20 |
| 53 | 1.3.7.4.6.4 | Correção de Bugs/Erros | 3h | 2019-05-14 08:30 A | 2019-05-14 11:30 A | 52 | 100% | 2019-05-14 08:30 | 2019-05-14 11:30 |  | Daniel | 3h | 3h | 15 | 15 | 30 |
| 54 | 1.3.7.4.6.5 | Refatoração do Código | 2h | 2019-05-14 11:30 A | 2019-05-14 14:30 A | 53 | 100% | 2019-05-14 11:30 | 2019-05-14 14:30 |  | Daniel | 2h | 2h | 10 | 10 | 10 |

| ID | WBS | Task | Type | Duration | Start | Finish | Predecessors | Complete | Remaining | Baseline 1 start | Baseline 1 finish | Total slack | Free slack | Constraint | Resources | Work | Actual work | Cost | Actual cost | Story Points |
| --- | --- | --- | --- | --- | --- | --- | --- | --- | --- | --- | --- | --- | --- | --- | --- | --- | --- | --- | --- | --- |
| 55 | 1.3.7.5 | **User Story 9-20 - Form Gestão_Vendas** |  | 10.3d | 2019-05-06 09:00 A | 2019-05-14 13:30 |  | 99% | 0d | 2019-05-08 16:00 | 2019-05-15 15:30 | 31.11d |  |  |  | 25.5h | 25.5h | 127.5 | 127.5 |  |
| 56 | 1.3.7.5.1 | **User Story 9 - Design do Form Gestao_Vendas** |  | 0.4d | 2019-05-08 16:00 A | 2019-05-09 09:00 A |  | 100% |  | 2019-05-08 16:00 | 2019-05-09 09:00 |  |  |  |  | 2h | 2h | 10 | 10 |  |
| 57 | 1.3.7.5.1.1 | Criação do Form |  | 30min | 2019-05-08 16:00 A | 2019-05-08 16:30 A | 37, 29 | 100% |  | 2019-05-08 16:00 | 2019-05-08 16:30 |  |  |  | Diogo | 0.5h | 0.5h | 2.5 | 2.5 | 15 |
| 58 | 1.3.7.5.1.2 | Implementação do UI |  | 1h | 2019-05-08 16:30 A | 2019-05-09 08:30 A | 57 | 100% |  | 2019-05-08 16:30 | 2019-05-09 08:30 |  |  |  | Diogo | 1h | 1h | 5 | 5 | 15 |
| 59 | 1.3.7.5.1.3 | Implementar butões Necessários |  | 30min | 2019-05-09 08:30 A | 2019-05-09 09:00 A | 58 | 100% |  | 2019-05-09 08:30 | 2019-05-09 09:00 |  |  |  | Diogo | 0.5h | 0.5h | 2.5 | 2.5 | 20 |
| 60 | 1.3.7.5.2 | **User Story 10 - Adicionar Carro Vendido** |  | 1d | 2019-05-09 09:00 A | 2019-05-09 15:00 A |  | 100% |  | 2019-05-09 09:00 | 2019-05-09 15:00 |  |  |  |  | 5h | 5h | 25 | 25 |  |
| 61 | 1.3.7.5.2.1 | Implementação do código |  | 5h | 2019-05-09 09:00 A | 2019-05-09 15:00 A | 56 | 100% |  | 2019-05-09 09:00 | 2019-05-09 15:00 |  |  |  | Diogo | 5h | 5h | 25 | 25 | 30 |
| 62 | 1.3.7.5.3 | **User Story 11 - Editar Carro Vendido** |  | 0d | 2019-05-06 09:00 | 2019-05-06 09:00 |  |  |  | 2019-05-09 15:00 | 2019-05-10 10:00 | 41.41d | 7.1d |  |  |  |  |  |  |  |
| 63 | 1.3.7.5.3.1 | Implementação do código | inactive | 4h | 2019-05-09 15:00 | 2019-05-10 10:00 | 60 |  |  | 2019-05-09 15:00 | 2019-05-10 10:00 | 34.81d |  |  | Diogo | 4h |  | 20 |  | 30 |
| 64 | 1.3.7.5.4 | **User Story 12 - Eliminar Carro Vendido** |  | 0.5d | 2019-05-10 10:00 A | 2019-05-10 13:30 A |  | 100% |  | 2019-05-10 10:00 | 2019-05-10 13:30 |  |  |  |  | 2.5h | 2.5h | 12.5 | 12.5 |  |
| 65 | 1.3.7.5.4.1 | Verificação se o user pretende apagar os dados selecionados |  | 30min | 2019-05-10 10:00 A | 2019-05-10 10:30 A | 62 | 100% |  | 2019-05-10 10:00 | 2019-05-10 10:30 |  |  |  | Diogo | 0.5h | 0.5h | 2.5 | 2.5 | 20 |
| 66 | 1.3.7.5.4.2 | Implementação do código |  | 2h | 2019-05-10 10:30 A | 2019-05-10 13:30 A | 65 | 100% |  | 2019-05-10 10:30 | 2019-05-10 13:30 |  |  |  | Diogo | 2h | 2h | 10 | 10 | 30 |
| 67 | 1.3.7.5.5 | **User Story 13 - Listar Carros Vendidos** |  | 0.2d | 2019-05-10 13:30 A | 2019-05-10 14:30 A |  | 100% |  | 2019-05-10 13:30 | 2019-05-10 14:30 |  |  |  |  | 1h | 1h | 5 | 5 |  |
| 68 | 1.3.7.5.5.1 | Implementação do código |  | 1h | 2019-05-10 13:30 A | 2019-05-10 14:30 A | 56, 60, 62, 64 | 100% |  | 2019-05-10 13:30 | 2019-05-10 14:30 |  |  |  | Diogo | 1h | 1h | 5 | 5 | 30 |
| 69 | 1.3.7.5.6 | **User Story 14 - Listar Gastos e Total Gastos** |  | 0d | 2019-05-06 09:00 | 2019-05-06 09:00 |  |  |  | 2019-05-10 14:30 | 2019-05-10 15:30 | 41.41d | 7.1d |  |  |  |  |  |  |  |
| 70 | 1.3.7.5.6.1 | Implementação do código | inactive | 1h | 2019-05-10 14:30 | 2019-05-10 15:30 | 56, 60, 62, 64, 67 |  |  | 2019-05-10 14:30 | 2019-05-10 15:30 | 33.91d |  |  | Diogo | 1h |  | 5 |  | 30 |
| 71 | 1.3.7.5.7 | **User Story 15 - Listar Ganhos e Total Ganhos** |  | 0d | 2019-05-06 09:00 | 2019-05-06 09:00 |  |  |  | 2019-05-10 15:30 | 2019-05-10 16:30 | 41.41d | 7.1d |  |  |  |  |  |  |  |
| 72 | 1.3.7.5.7.1 | Implementação do código | inactive | 1h | 2019-05-10 13:30 | 2019-05-10 14:30 | 56, 60, 62, 64, 69 |  |  | 2019-05-10 15:30 | 2019-05-10 16:30 | 34.11d |  |  | Diogo | 1h |  | 5 |  | 30 |
| 73 | 1.3.7.5.8 | **User Story 16 - Listar Margem Lucro e Total Lucro** |  | 0d | 2019-05-06 09:00 | 2019-05-06 09:00 |  |  |  | 2019-05-10 16:30 | 2019-05-13 08:30 | 41.41d | 7.9d |  |  |  |  |  |  |  |
| 74 | 1.3.7.5.8.1 | Implementação do código | inactive | 1h | 2019-05-10 13:30 | 2019-05-10 14:30 | 56, 60, 62, 64, 71 |  |  | 2019-05-10 16:30 | 2019-05-13 08:30 | 34.11d |  |  | Diogo | 1h |  | 5 |  | 30 |
| 75 | 1.3.7.5.9 | **User Story 17 - Calcular Valor IVA** |  | 0d | 2019-05-06 09:00 | 2019-05-06 09:00 |  |  |  | 2019-05-13 08:30 | 2019-05-13 10:30 | 41.41d | 8.5d |  |  |  |  |  |  |  |
| 76 | 1.3.7.5.9.1 | Criação de metodo para realizar o calculo | inactive | 1.5h | 2019-05-13 08:30 | 2019-05-13 10:00 | 56, 60, 62, 64, 73 |  |  | 2019-05-13 08:30 | 2019-05-13 10:00 | 33.11d | 0d | start no earlier than 2019-05-13 08:30 | Diogo | 1.5h |  | 7.5 |  | 15 |
| 77 | 1.3.7.5.9.2 | Implementação do código | inactive | 30min | 2019-05-13 10:00 | 2019-05-13 10:30 | 76 |  |  | 2019-05-13 10:00 | 2019-05-13 10:30 | 33.11d |  |  | Diogo | 0.5h |  | 2.5 |  | 30 |
| 78 | 1.3.7.5.10 | **User Story 18 - Calcular Valor Desconto** |  | 0d | 2019-05-06 09:00 | 2019-05-06 09:00 |  |  |  | 2019-05-13 11:30 | 2019-05-13 14:30 | 41.41d | 7.3d |  |  |  |  |  |  |  |
| 79 | 1.3.7.5.10.1 | Criação de metodo para realizar o calculo | inactive | 1.5h | 2019-05-13 11:30 | 2019-05-13 14:00 | 56, 60, 62, 64, 75 |  |  | 2019-05-13 11:30 | 2019-05-13 14:00 | 32.51d | 0d | start no earlier than 2019-05-13 11:30 | Diogo | 1.5h |  | 7.5 |  | 15 |
| 80 | 1.3.7.5.10.2 | Implementação do código | inactive | 30min | 2019-05-13 14:00 | 2019-05-13 14:30 | 79 |  |  | 2019-05-13 14:00 | 2019-05-13 14:30 | 32.51d |  |  | Diogo | 0.5h |  | 2.5 |  | 30 |

| ID | WBS | Task | Type | Duration | Start | Finish | Predecessors | Complete | Remaining | Baseline 1 start | Baseline 1 finish | Total slack | Free slack | Resources | Work | Actual work | Cost | Actual cost | Story Points |
| --- | --- | --- | --- | --- | --- | --- | --- | --- | --- | --- | --- | --- | --- | --- | --- | --- | --- | --- | --- |
| 81 | 1.3.7.5.11 | **User Story 19 - Calcular Valor Total Extras** |  | 0d | 2019-05-06 09:00 | 2019-05-06 09:00 |  |  |  | 2019-05-13 14:30 | 2019-05-13 16:30 | 41.41d |  |  |  |  |  |  |  |
| 82 | 1.3.7.5.11.1 | Criação de metodo para realizar o calculo | inactive | 1.5h | 2019-05-10 14:30 | 2019-05-10 16:00 | 56, 60, 62, 64, 67, 78 |  |  | 2019-05-13 14:30 | 2019-05-13 16:00 | 33.71d | 0d | Diogo | 1.5h |  | 7.5 |  | 15 |
| 83 | 1.3.7.5.11.2 | Implementação do código | inactive | 30min | 2019-05-10 16:00 | 2019-05-10 16:30 | 82 |  |  | 2019-05-13 16:00 | 2019-05-13 16:30 | 33.71d |  | Diogo | 0.5h |  | 2.5 |  | 30 |
| 84 | 1.3.7.5.12 | **User Story 20 - Proteções e Correções de Erros** |  | 3d | 2019-05-10 14:30 A | 2019-05-14 13:30 A |  | 100% |  | 2019-05-13 16:30 | 2019-05-15 15:30 |  |  |  | 15h | 15h | 75 | 75 |  |
| 85 | 1.3.7.5.12.1 | Garantir que os dados criados no Form são guardados |  | 1h | 2019-05-10 14:30 A | 2019-05-10 15:30 A | 56, 60, 62, 64, 67, 69, 71, 73, 75, 78, 81 | 100% |  | 2019-05-13 16:30 | 2019-05-14 08:30 |  |  | Diogo | 1h | 1h | 5 | 5 | 20 |
| 86 | 1.3.7.5.12.2 | Garantir que os dados anteriores são carregados |  | 1h | 2019-05-10 15:30 A | 2019-05-10 16:30 A | 85 | 100% |  | 2019-05-14 08:30 | 2019-05-14 09:30 |  |  | Diogo | 1h | 1h | 5 | 5 | 15 |
| 87 | 1.3.7.5.12.3 | Implementar proteções necessárias |  | 4h | 2019-05-10 16:30 A | 2019-05-13 11:30 A | 86 | 100% |  | 2019-05-14 09:30 | 2019-05-14 14:30 |  |  | Diogo | 4h | 4h | 20 | 20 | 30 |
| 88 | 1.3.7.5.12.4 | Testar Funcionalidades |  | 4h | 2019-05-13 11:30 A | 2019-05-13 16:30 A | 87 | 100% |  | 2019-05-14 14:30 | 2019-05-15 09:30 |  |  | Diogo | 4h | 4h | 20 | 20 | 20 |
| 89 | 1.3.7.5.12.5 | Correção de Bugs/Erros |  | 3h | 2019-05-13 16:30 A | 2019-05-14 10:30 A | 88 | 100% |  | 2019-05-15 09:30 | 2019-05-15 13:30 |  |  | Diogo | 3h | 3h | 15 | 15 | 20 |
| 90 | 1.3.7.5.12.6 | Refatoração do Código |  | 2h | 2019-05-14 10:30 A | 2019-05-14 13:30 A | 89 | 100% |  | 2019-05-15 13:30 | 2019-05-15 15:30 |  |  | Diogo | 2h | 2h | 10 | 10 | 30 |
| 91 | 1.3.7.6 | Revisão do Sprint |  | 2h | 2019-05-14 13:30 A | 2019-05-14 15:30 A | 84 | 100% |  | 2019-05-15 15:30 | 2019-05-16 08:30 |  |  | Daniel; Diogo | 4h | 4h | 20 | 20 | 25 |
| 92 | 1.3.7.7 | Retrospetiva do Sprint |  | 1h | 2019-05-14 15:30 A | 2019-05-14 16:30 A | 91 | 100% |  | 2019-05-16 08:30 | 2019-05-16 09:30 |  |  | Daniel; Diogo | 2h | 2h | 10 | 10 | 25 |
| 93 | 1.3.7.8 | Reunião Final Do Sprint |  | 30min | 2019-05-14 16:30 A | 2019-05-14 17:00 A | 92 | 100% |  | 2019-05-16 09:30 | 2019-05-16 10:00 |  |  | Daniel; Diogo | 1h | 1h | 5 | 5 | 25 |
| 94 | 1.3.7.9 | SPRINT 1 COMPLETO |  | 2min | 2019-05-15 08:00 A | 2019-05-15 08:02 A | 25, 26, 29, 35, 55, 91, 92, 93 | 100% |  | 2019-05-16 10:00 | 2019-05-16 10:02 |  |  |  |  |  |  |  |  |
| 95 | 1.3.8 | **Sprint 2 - Dia 27/05 até 19/06** |  | 11.41d | 2019-05-27 09:00 A | 2019-06-05 10:02 |  | 99% | 0d | 2019-05-27 09:00 | 2019-06-05 10:02 |  |  |  | 76.5h | 76.5h | 382.5 | 382.5 |  |
| 96 | 1.3.8.1 | Planeamento da Sprint |  | 2h | 2019-05-27 09:00 A | 2019-05-27 11:00 A | 24 | 100% |  | 2019-05-27 09:00 | 2019-05-27 11:00 |  |  | Daniel; Diogo | 4h | 4h | 20 | 20 | 15 |
| 97 | 1.3.8.2 | **User Story 21 - 32 - Form Gestão_Oficina** |  | 8.1d | 2019-05-27 09:00 A | 2019-06-03 09:30 |  | 99% | 0d | 2019-05-27 11:00 | 2019-06-03 16:30 | 9.31d |  |  | 38.5h | 38.5h | 192.5 | 192.5 |  |
| 98 | 1.3.8.2.1 | **User Story 21 - Design do Form Gestao_Vendas** |  | 0.4d | 2019-05-27 11:00 A | 2019-05-27 14:00 A |  | 100% |  | 2019-05-27 11:00 | 2019-05-27 14:00 |  |  |  | 2h | 2h | 10 | 10 |  |
| 99 | 1.3.8.2.1.1 | Criação do Form |  | 30min | 2019-05-27 11:00 A | 2019-05-27 11:30 A | 30, 37, 57, 96 | 100% |  | 2019-05-27 11:00 | 2019-05-27 11:30 |  |  | Diogo | 0.5h | 0.5h | 2.5 | 2.5 | 15 |
| 100 | 1.3.8.2.1.2 | Implentação do UI |  | 1h | 2019-05-27 11:30 A | 2019-05-27 13:30 A | 99 | 100% |  | 2019-05-27 11:30 | 2019-05-27 13:30 |  |  | Daniel | 1h | 1h | 5 | 5 | 15 |
| 101 | 1.3.8.2.1.3 | Implementar butões Necessários |  | 30min | 2019-05-27 13:30 A | 2019-05-27 14:00 A | 100 | 100% |  | 2019-05-27 13:30 | 2019-05-27 14:00 |  |  | Daniel | 0.5h | 0.5h | 2.5 | 2.5 | 20 |
| 102 | 1.3.8.2.2 | **User Story 22 - Adicionar Carro de Oficina** |  | 0.8d | 2019-05-27 14:00 A | 2019-05-28 09:00 A |  | 100% |  | 2019-05-27 14:00 | 2019-05-28 09:00 |  |  |  | 4h | 4h | 20 | 20 |  |
| 103 | 1.3.8.2.2.1 | Implementação do código |  | 4h | 2019-05-27 14:00 A | 2019-05-28 09:00 A | 98 | 100% |  | 2019-05-27 14:00 | 2019-05-28 09:00 |  |  | Daniel | 4h | 4h | 20 | 20 | 30 |
| 104 | 1.3.8.2.3 | **User Story 23 - Adicionar Serviços a um Carro** |  | 0.4d | 2019-05-28 09:00 A | 2019-05-28 11:00 A |  | 100% |  | 2019-05-28 09:00 | 2019-05-28 11:00 |  |  |  | 2h | 2h | 10 | 10 |  |
| 105 | 1.3.8.2.3.1 | Implementação do código |  | 2h | 2019-05-28 09:00 A | 2019-05-28 11:00 A | 102 | 100% |  | 2019-05-28 09:00 | 2019-05-28 11:00 |  |  | Daniel | 2h | 2h | 10 | 10 | 30 |

| ID | WBS | Task | Type | Duration | Start | Finish | Predecessors | Complete | Baseline 1 start | Baseline 1 finish | Total slack | Free slack | Resources | Work | Actual work | Cost | Actual cost | Story Points |
| --- | --- | --- | --- | --- | --- | --- | --- | --- | --- | --- | --- | --- | --- | --- | --- | --- | --- | --- |
| 106 | 1.3.8.2.4 | **User Story 24 - Adicionar Parcela a Serviço** |  | 0.4d | 2019-05-28 11:00 A | 2019-05-28 14:00 A |  | 100% | 2019-05-28 11:00 | 2019-05-28 14:00 |  |  |  | 2h | 2h | 10 | 10 |  |
| 107 | 1.3.8.2.4.1 | Implementação do código |  | 2h | 2019-05-28 11:00 A | 2019-05-28 14:00 A | 104 | 100% | 2019-05-28 11:00 | 2019-05-28 14:00 |  |  | Daniel | 2h | 2h | 10 | 10 | 30 |
| 108 | 1.3.8.2.5 | **User Story 25- Apagar Carro de Oficina** |  | 0.5d | 2019-05-28 14:00 A | 2019-05-28 16:30 A |  | 100% | 2019-05-28 14:00 | 2019-05-28 16:30 |  |  |  | 2.5h | 2.5h | 12.5 | 12.5 |  |
| 109 | 1.3.8.2.5.1 | Verificação se o user pretende apagar os dados selecionados |  | 30min | 2019-05-28 14:00 A | 2019-05-28 14:30 A | 106 | 100% | 2019-05-28 14:00 | 2019-05-28 14:30 |  |  | Daniel | 0.5h | 0.5h | 2.5 | 2.5 | 20 |
| 110 | 1.3.8.2.5.2 | Implementação do código |  | 2h | 2019-05-28 14:30 A | 2019-05-28 16:30 A | 109 | 100% | 2019-05-28 14:30 | 2019-05-28 16:30 |  |  | Daniel | 2h | 2h | 10 | 10 | 30 |
| 111 | 1.3.8.2.6 | **User Story 26 - Eliminar Serviço do Carro** |  | 0.5d | 2019-05-28 16:30 A | 2019-05-29 10:00 A |  | 100% | 2019-05-28 16:30 | 2019-05-29 10:00 |  |  |  | 2.5h | 2.5h | 12.5 | 12.5 |  |
| 112 | 1.3.8.2.6.1 | Verificação se o user pretende apagar os dados selecionados |  | 30min | 2019-05-28 16:30 A | 2019-05-28 17:00 A | 108 | 100% | 2019-05-28 16:30 | 2019-05-28 17:00 |  |  | Daniel | 0.5h | 0.5h | 2.5 | 2.5 | 20 |
| 113 | 1.3.8.2.6.2 | Implementação do código |  | 2h | 2019-05-29 08:00 A | 2019-05-29 10:00 A | 112 | 100% | 2019-05-29 08:00 | 2019-05-29 10:00 |  |  | Daniel | 2h | 2h | 10 | 10 | 30 |
| 114 | 1.3.8.2.7 | **User Story 27 - Eliminar Parcela do Serviço** |  | 0.5d | 2019-05-29 10:00 A | 2019-05-29 13:30 A |  | 100% | 2019-05-29 10:00 | 2019-05-29 13:30 |  |  |  | 2.5h | 2.5h | 12.5 | 12.5 |  |
| 115 | 1.3.8.2.7.1 | Verificação se o user pretende apagar os dados selecionados |  | 30min | 2019-05-29 10:00 A | 2019-05-29 10:30 A | 111 | 100% | 2019-05-29 10:00 | 2019-05-29 10:30 |  |  | Daniel | 0.5h | 0.5h | 2.5 | 2.5 | 20 |
| 116 | 1.3.8.2.7.2 | Implementação do código |  | 2h | 2019-05-29 10:30 A | 2019-05-29 13:30 A | 115 | 100% | 2019-05-29 10:30 | 2019-05-29 13:30 |  |  | Daniel | 2h | 2h | 10 | 10 | 30 |
| 117 | 1.3.8.2.8 | **User Story 28 - Calcular Custo Total Carro** |  | 0d | 2019-05-27 09:00 | 2019-05-27 09:00 |  |  | 2019-05-29 13:30 | 2019-05-29 15:30 | 17.41d | 0d |  |  |  |  |  |  |
| 118 | 1.3.8.2.8.1 | Criação de metodo para realizar o calculo | inactive | 1.5h | 2019-05-29 13:30 | 2019-05-29 15:00 | 114 |  | 2019-05-29 13:30 | 2019-05-29 15:00 | 13.11d | 0d | Daniel | 1.5h |  | 7.5 |  | 25 |
| 119 | 1.3.8.2.8.2 | Implementação do código | inactive | 30min | 2019-05-29 15:00 | 2019-05-29 15:30 | 118 |  | 2019-05-29 15:00 | 2019-05-29 15:30 | 13.11d |  | Daniel | 0.5h |  | 2.5 |  | 30 |
| 120 | 1.3.8.2.9 | **User Story 29 - Calcular Custo Total Serviço** |  | 0d | 2019-05-27 09:00 | 2019-05-27 09:00 |  |  | 2019-05-29 15:30 | 2019-05-30 08:30 | 17.41d | 0d |  |  |  |  |  |  |
| 121 | 1.3.8.2.9.1 | Criação de metodo para realizar o calculo | inactive | 1.5h | 2019-05-27 09:00 | 2019-05-27 10:30 | 117 |  | 2019-05-29 15:30 | 2019-05-29 17:00 | 17.01d | 0d | Daniel | 1.5h |  | 7.5 |  | 25 |
| 122 | 1.3.8.2.9.2 | Implementação do código | inactive | 30min | 2019-05-27 10:30 | 2019-05-27 11:00 | 121 |  | 2019-05-30 08:00 | 2019-05-30 08:30 | 17.01d |  | Daniel | 0.5h |  | 2.5 |  | 30 |
| 123 | 1.3.8.2.10 | **User Story 30 - Calcular Custo Total Cliente** |  | 0d | 2019-05-27 09:00 | 2019-05-27 09:00 |  |  | 2019-05-30 08:30 | 2019-05-30 10:30 | 17.41d |  |  |  |  |  |  |  |
| 124 | 1.3.8.2.10.1 | Criação de metodo para realizar o calculo | inactive | 1.5h | 2019-05-27 09:00 | 2019-05-27 10:30 | 120 |  | 2019-05-30 08:30 | 2019-05-30 10:00 | 17.01d | 0d | Daniel | 1.5h |  | 7.5 |  | 25 |
| 125 | 1.3.8.2.10.2 | Implementação do código | inactive | 30min | 2019-05-27 10:30 | 2019-05-27 11:00 | 124 |  | 2019-05-30 10:00 | 2019-05-30 10:30 | 17.01d |  | Daniel | 0.5h |  | 2.5 |  | 30 |
| 126 | 1.3.8.2.11 | **User Story 31 - Emitir Fatura por Serviço** |  | 1.4d | 2019-05-29 13:30 A | 2019-05-30 11:30 A |  | 100% | 2019-05-30 10:30 | 2019-05-31 09:30 |  |  |  | 7h | 7h | 35 | 35 |  |
| 127 | 1.3.8.2.11.1 | Carregar todos os dados relativos ao serviço |  | 2h | 2019-05-29 13:30 A | 2019-05-29 15:30 A | 98, 102, 104, 106, 108, 114, 117, 120, 123 | 100% | 2019-05-30 10:30 | 2019-05-30 13:30 |  |  | Daniel | 2h | 2h | 10 | 10 | 25 |
| 128 | 1.3.8.2.11.2 | Implementar código para emitir fatura |  | 5h | 2019-05-29 15:30 A | 2019-05-30 11:30 A | 127 | 100% | 2019-05-30 13:30 | 2019-05-31 09:30 |  |  | Daniel | 5h | 5h | 25 | 25 | 40 |
| 129 | 1.3.8.2.12 | **User Story 32 - Proteções e Correções de Bugs** |  | 2.8d | 2019-05-30 11:30 A | 2019-06-03 09:30 A |  | 100% | 2019-05-31 09:30 | 2019-06-03 16:30 |  |  |  | 14h | 14h | 70 | 70 |  |
| 130 | 1.3.8.2.12.1 | Garantir que os dados anteriores são carregados |  | 1h | 2019-05-30 11:30 A | 2019-05-30 13:30 A | 126 | 100% | 2019-05-31 09:30 | 2019-05-31 10:30 |  |  | Daniel | 1h | 1h | 5 | 5 | 20 |
| 131 | 1.3.8.2.12.2 | Garantir que os dados criados no Form são guardados |  | 1h | 2019-05-30 13:30 A | 2019-05-30 14:30 A | 130 | 100% | 2019-05-31 10:30 | 2019-05-31 11:30 |  |  | Daniel | 1h | 1h | 5 | 5 | 20 |
| 132 | 1.3.8.2.12.3 | Implementar Proteções Necessárias |  | 4h | 2019-05-30 14:30 A | 2019-05-31 09:30 A | 131 | 100% | 2019-05-31 11:30 | 2019-05-31 16:30 |  |  | Daniel | 4h | 4h | 20 | 20 | 30 |
| 133 | 1.3.8.2.12.4 | Testar Funcionalidades |  | 3h | 2019-05-31 09:30 A | 2019-05-31 13:30 A | 132 | 100% | 2019-05-31 16:30 | 2019-06-03 10:30 |  |  | Daniel | 3h | 3h | 15 | 15 | 20 |
| 134 | 1.3.8.2.12.5 | Correção de Bugs/Erros |  | 3h | 2019-05-31 13:30 A | 2019-05-31 16:30 A | 133 | 100% | 2019-06-03 10:30 | 2019-06-03 14:30 |  |  | Daniel | 3h | 3h | 15 | 15 | 30 |
| 135 | 1.3.8.2.12.6 | Refatoração do Código |  | 2h | 2019-05-31 16:30 A | 2019-06-03 09:30 A | 134 | 100% | 2019-06-03 14:30 | 2019-06-03 16:30 |  |  | Daniel | 2h | 2h | 10 | 10 | 15 |

| ID | WBS | Task | Type | Duration | Start | Finish | Predecessors | Complete | Remaining | Baseline 1 start | Baseline 1 finish | Total slack | Free slack | Constraint | Resources | Work | Actual work | Cost | Actual cost | Story Points |
| --- | --- | --- | --- | --- | --- | --- | --- | --- | --- | --- | --- | --- | --- | --- | --- | --- | --- | --- | --- | --- |
| 136 | 1.3.8.3 | **User Story 33 - 40 - Form Gestão_Aluguer** |  | 7.3d | 2019-05-27 09:00 A | 2019-05-31 14:30 |  | 99% | 0d | 2019-05-27 11:30 | 2019-05-31 16:30 | 10.11d |  |  |  | 34h | 34h | 170 | 170 |  |
| 137 | 1.3.8.3.1 | **User Story 33 - Design form Gestao_Aluguer** |  | 0.4d | 2019-05-27 11:30 A | 2019-05-27 14:30 A |  | 100% |  | 2019-05-27 11:30 | 2019-05-27 14:30 |  |  |  |  | 2h | 2h | 10 | 10 |  |
| 138 | 1.3.8.3.1.1 | Criação do Form |  | 30min | 2019-05-27 11:30 A | 2019-05-27 12:00 A | 30, 37, 57, 99 | 100% |  | 2019-05-27 11:30 | 2019-05-27 12:00 |  |  |  | Diogo | 0.5h | 0.5h | 2.5 | 2.5 | 15 |
| 139 | 1.3.8.3.1.2 | Implentação do UI |  | 1h | 2019-05-27 13:00 A | 2019-05-27 14:00 A | 138 | 100% |  | 2019-05-27 13:00 | 2019-05-27 14:00 |  |  |  | Diogo | 1h | 1h | 5 | 5 | 15 |
| 140 | 1.3.8.3.1.3 | Implementar butões Necessários |  | 30min | 2019-05-27 14:00 A | 2019-05-27 14:30 A | 139 | 100% |  | 2019-05-27 14:00 | 2019-05-27 14:30 |  |  |  | Diogo | 0.5h | 0.5h | 2.5 | 2.5 | 20 |
| 141 | 1.3.8.3.2 | **User Story 34 - Adicionar Carro de Aluguer** |  | 0.8d | 2019-05-27 14:30 A | 2019-05-28 09:30 A |  | 100% |  | 2019-05-27 14:30 | 2019-05-28 09:30 |  |  |  |  | 4h | 4h | 20 | 20 |  |
| 142 | 1.3.8.3.2.1 | Implementação do código |  | 4h | 2019-05-27 14:30 A | 2019-05-28 09:30 A | 137 | 100% |  | 2019-05-27 14:30 | 2019-05-28 09:30 |  |  |  | Diogo | 4h | 4h | 20 | 20 | 30 |
| 143 | 1.3.8.3.3 | **User Story 35 - Eliminar Carro de Aluguer** |  | 0.4d | 2019-05-28 09:30 A | 2019-05-28 11:30 A |  | 100% |  | 2019-05-28 09:30 | 2019-05-28 11:30 |  |  |  |  | 2h | 2h | 10 | 10 |  |
| 144 | 1.3.8.3.3.1 | Verificação se o user pretende apagar os dados selecionados |  | 30min | 2019-05-28 09:30 A | 2019-05-28 10:00 A | 141 | 100% |  | 2019-05-28 09:30 | 2019-05-28 10:00 |  |  |  | Diogo | 0.5h | 0.5h | 2.5 | 2.5 | 20 |
| 145 | 1.3.8.3.3.2 | Implementação do código |  | 1.5h | 2019-05-28 10:00 A | 2019-05-28 11:30 A | 144 | 100% |  | 2019-05-28 10:00 | 2019-05-28 11:30 |  |  |  | Diogo | 1.5h | 1.5h | 7.5 | 7.5 | 30 |
| 146 | 1.3.8.3.4 | **User Story 36 - Atribuir Carro de Aluguer a Cliente** |  | 0.6d | 2019-05-28 11:30 A | 2019-05-28 15:30 A |  | 100% |  | 2019-05-28 11:30 | 2019-05-28 15:30 |  |  |  |  | 3h | 3h | 15 | 15 |  |
| 147 | 1.3.8.3.4.1 | Implementação do código |  | 3h | 2019-05-28 11:30 A | 2019-05-28 15:30 A | 143 | 100% |  | 2019-05-28 11:30 | 2019-05-28 15:30 |  |  |  | Diogo | 3h | 3h | 15 | 15 | 30 |
| 148 | 1.3.8.3.5 | **User Story 37 - Calcular Kilometros Percorridos** |  | 0.4d | 2019-05-28 15:30 A | 2019-05-29 08:30 A |  | 100% |  | 2019-05-28 15:30 | 2019-05-29 08:30 |  |  |  |  | 2h | 2h | 10 | 10 |  |
| 149 | 1.3.8.3.5.1 | Criação de metodo para realizar o calculo |  | 1.5h | 2019-05-28 15:30 A | 2019-05-28 17:00 A | 146 | 100% |  | 2019-05-28 15:30 | 2019-05-28 17:00 |  |  |  | Diogo | 1.5h | 1.5h | 7.5 | 7.5 | 20 |
| 150 | 1.3.8.3.5.2 | Implementação do código |  | 30min | 2019-05-29 08:00 A | 2019-05-29 08:30 A | 149 | 100% |  | 2019-05-29 08:00 | 2019-05-29 08:30 |  |  |  | Diogo | 0.5h | 0.5h | 2.5 | 2.5 | 30 |
| 151 | 1.3.8.3.6 | **User Story 38 - Calcular Valor a Pagar** |  | 0d | 2019-05-27 09:00 | 2019-05-27 09:00 |  |  |  | 2019-05-29 08:30 | 2019-05-29 10:30 | 17.41d |  |  |  |  |  |  |  |  |
| 152 | 1.3.8.3.6.1 | Criação de metodo para realizar o calculo | inactive | 1.5h | 2019-05-29 08:30 | 2019-05-29 10:00 | 148 |  |  | 2019-05-29 08:30 | 2019-05-29 10:00 | 13.91d | 0d |  | Diogo | 1.5h |  | 7.5 |  | 20 |
| 153 | 1.3.8.3.6.2 | Implementação do código | inactive | 30min | 2019-05-29 10:00 | 2019-05-29 10:30 | 152 |  |  | 2019-05-29 10:00 | 2019-05-29 10:30 | 13.91d |  |  | Diogo | 0.5h |  | 2.5 |  | 30 |
| 154 | 1.3.8.3.7 | **User Story 39 - Emitir Fatura de Aluguer** |  | 1.4d | 2019-05-29 08:30 A | 2019-05-29 16:30 A |  | 100% |  | 2019-05-29 10:30 | 2019-05-30 09:30 |  |  |  |  | 7h | 7h | 35 | 35 |  |
| 155 | 1.3.8.3.7.1 | Carregar todos os dados relativos ao Aluguer |  | 2h | 2019-05-29 08:30 A | 2019-05-29 10:30 A | 137, 141, 143, 146, 148, 151 | 100% |  | 2019-05-29 10:30 | 2019-05-29 13:30 |  |  |  | Diogo | 2h | 2h | 10 | 10 | 20 |
| 156 | 1.3.8.3.7.2 | Implementar código para emitir fatura |  | 5h | 2019-05-29 10:30 A | 2019-05-29 16:30 A | 155 | 100% |  | 2019-05-29 13:30 | 2019-05-30 09:30 |  |  |  | Diogo | 5h | 5h | 25 | 25 | 40 |
| 157 | 1.3.8.3.8 | **User Story 40- Proteções e Correções de Erros** |  | 2.8d | 2019-05-29 16:30 A | 2019-05-31 14:30 A |  | 100% |  | 2019-05-30 09:30 | 2019-05-31 16:30 |  |  |  |  | 14h | 14h | 70 | 70 |  |
| 158 | 1.3.8.3.8.1 | Garantir que os dados anteriores são carregados |  | 1h | 2019-05-29 16:30 A | 2019-05-30 08:30 A | 154 | 100% |  | 2019-05-30 09:30 | 2019-05-30 10:30 |  |  |  | Diogo | 1h | 1h | 5 | 5 | 15 |
| 159 | 1.3.8.3.8.2 | Garantir que os dados criados no Form são guardados |  | 1h | 2019-05-30 08:30 A | 2019-05-30 09:30 A | 158 | 100% |  | 2019-05-30 10:30 | 2019-05-30 11:30 |  |  |  | Diogo | 1h | 1h | 5 | 5 | 15 |
| 160 | 1.3.8.3.8.3 | Implementar Proteções Necessárias |  | 4h | 2019-05-30 09:30 A | 2019-05-30 14:30 A | 159 | 100% |  | 2019-05-30 11:30 | 2019-05-30 16:30 |  |  |  | Diogo | 4h | 4h | 20 | 20 | 30 |
| 161 | 1.3.8.3.8.4 | Testar Funcionalidades |  | 3h | 2019-05-30 14:30 A | 2019-05-31 08:30 A | 160 | 100% |  | 2019-05-30 16:30 | 2019-05-31 10:30 |  |  |  | Diogo | 3h | 3h | 15 | 15 | 20 |
| 162 | 1.3.8.3.8.5 | Correção de Bugs/Erros |  | 3h | 2019-05-31 08:30 A | 2019-05-31 11:30 A | 161 | 100% |  | 2019-05-31 10:30 | 2019-05-31 14:30 |  |  |  | Diogo | 3h | 3h | 15 | 15 | 30 |
| 163 | 1.3.8.3.8.6 | Refatoração do Código |  | 2h | 2019-05-31 11:30 A | 2019-05-31 14:30 A | 162 | 100% |  | 2019-05-31 14:30 | 2019-05-31 16:30 |  |  |  | Diogo | 2h | 2h | 10 | 10 | 20 |
| 164 | 1.3.9 | Revisão do Sprint |  | 2h | 2019-06-04 08:00 A | 2019-06-04 10:00 A | 137, 141, 143, 146, 148, 151, 154, 157 | 100% |  | 2019-06-04 08:00 | 2019-06-04 10:00 |  |  | start no earlier than 2019-06-04 08:00 | Daniel; Diogo | 4h | 4h | 20 | 20 | 20 |
| 165 | 1.3.10 | Retrospetiva do Sprint |  | 1h | 2019-06-04 10:00 A | 2019-06-04 11:00 A | 164 | 100% |  | 2019-06-04 10:00 | 2019-06-04 11:00 |  |  |  | Daniel; Diogo | 2h | 2h | 10 | 10 | 20 |
| 166 | 1.3.11 | Reunião Final Do Sprint |  | 30min | 2019-06-04 11:00 A | 2019-06-04 11:30 A | 165 | 100% |  | 2019-06-04 11:00 | 2019-06-04 11:30 |  |  |  | Daniel; Diogo | 1h | 1h | 5 | 5 | 20 |
| 167 | 1.3.12 | SPRINT 2 COMPLETO |  | 2min | 2019-06-04 11:30 A | 2019-06-04 11:32 A | 166 | 100% |  | 2019-06-04 11:30 | 2019-06-04 11:32 |  |  |  | Daniel; Diogo | 0.07h | 0.07h | 0.33 | 0.33 |  |

| ID | WBS | Task | Duration | Start | Finish | Predecessors | Complete | Baseline 1 start | Baseline 1 finish | Resources | Work | Actual work | Cost | Actual cost | Story Points |
| --- | --- | --- | --- | --- | --- | --- | --- | --- | --- | --- | --- | --- | --- | --- | --- |
| 168 | 1.4 | **Conclusão do Projeto** | 0.5d | 2019-06-05 10:02 A | 2019-06-05 13:32 A |  | 100% | 2019-06-05 10:02 | 2019-06-05 13:32 | Daniel; Diogo | 10h | 10h | 50 | 50 |  |
| 169 | 1.4.1 | Reunião Final Projeto | 2h | 2019-06-05 10:02 A | 2019-06-05 13:02 A | 24, 95 | 100% | 2019-06-05 10:02 | 2019-06-05 13:02 | Daniel; Diogo | 4h | 4h | 20 | 20 | 15 |
| 170 | 1.4.2 | Conclusões sobre os Erros Cometidos | 30min | 2019-06-05 13:02 A | 2019-06-05 13:32 A | 169 | 100% | 2019-06-05 13:02 | 2019-06-05 13:32 | Daniel; Diogo | 1h | 1h | 5 | 5 | 15 |
| 171 | 1.5 | Projeto Concluido | 2min | 2019-06-11 08:00 A | 2019-06-11 08:02 A | 2, 4, 17, 168 | 100% | 2019-06-11 08:00 | 2019-06-11 08:02 | Daniel; Diogo | 0.07h | 0.07h | 0.33 | 0.33 |  |
