Schedule from MS Project, 2019-04-29 to 2019-06-25, 5 hours a day, costs in €.

## Calendars

- Standard: Mon-Fri 08:00-12:00, 13:00-17:00; Sat-Sun off.

## Resources

| Resource | Rate |
| --- | --- |
| Daniel | 5 |
| Diogo | 5 |

## Schedule

| ID | WBS | Task | Duration | Start | Finish | Predecessors | Total slack | Free slack | Constraint | Resources | Work | Cost |
| --- | --- | --- | --- | --- | --- | --- | --- | --- | --- | --- | --- | --- |
| 1 | 1 | **Projeto MDS** | 65.6d | 2019-04-29 08:00 | 2019-06-24 17:00 |  | 0.01d |  |  |  | 260.9h | 1,304.5 |
| 2 | 1.1 | **Inicio Projeto** | 0.1d | 2019-04-29 08:00 | 2019-04-29 08:30 |  | 59.67d | 0d |  |  | 1h | 5 |
| 3 | 1.1.1 | Reunião Inicial | 30min | 2019-04-29 08:00 | 2019-04-29 08:30 |  | 59.67d |  |  | Daniel; Diogo | 1h | 5 |
| 4 | 1.2 | **Planeamento Projeto** | 5.83d | 2019-04-29 08:30 | 2019-05-02 14:40 |  | 59.67d |  |  |  | 52.33h | 261.67 |
| 5 | 1.2.1 | **Build Backlog** | 1.3d | 2019-04-29 08:30 | 2019-04-29 16:00 | 2 | 59.67d | 0d |  |  | 7h | 35 |
| 6 | 1.2.1.1 | Determinar Requerimentos do Cliente | 30min | 2019-04-29 08:30 | 2019-04-29 09:00 | 2 | 59.67d | 0d |  | Daniel; Diogo | 1h | 5 |
| 7 | 1.2.1.2 | Criar User Stories | 4h | 2019-04-29 09:00 | 2019-04-29 14:00 | 6 | 59.67d | 0d |  | Daniel | 4h | 20 |
| 8 | 1.2.1.3 | Priorizar convenientemente User Stories | 2h | 2019-04-29 14:00 | 2019-04-29 16:00 | 7 | 59.67d |  |  | Diogo | 2h | 10 |
| 9 | 1.2.2 | Definir o numero de Sprints | 10min | 2019-04-29 16:00 | 2019-04-29 16:10 | 5 | 59.67d | 0d |  | Daniel; Diogo | 0.33h | 1.67 |
| 10 | 1.2.3 | Definir Plano de Comunicação | 15min | 2019-04-29 16:10 | 2019-04-29 16:25 | 9 | 59.67d | 0d |  | Daniel; Diogo | 0.5h | 2.5 |
| 11 | 1.2.4 | Definir Metodologias de trabalho | 30min | 2019-04-29 16:25 | 2019-04-29 16:55 | 10 | 59.67d | 0d |  | Daniel; Diogo | 1h | 5 |
| 12 | 1.2.5 | Identificação dos Riscos do Projeto | 45min | 2019-04-29 16:55 | 2019-04-30 08:40 | 11 | 59.67d | 0d |  | Daniel; Diogo | 1.5h | 7.5 |
| 13 | 1.2.6 | Analise dos Riscos do Projeto | 30min | 2019-04-30 08:40 | 2019-04-30 09:10 | 12 | 59.67d | 0d |  | Daniel; Diogo | 1h | 5 |
| 14 | 1.2.7 | Possiveis soluções para os Riscos do Projeto | 30min | 2019-04-30 09:10 | 2019-04-30 09:40 | 13 | 59.67d | 0d |  | Daniel; Diogo | 1h | 5 |
| 15 | 1.2.8 | Relatorio de Planeamento | 4d | 2019-04-30 09:40 | 2019-05-02 14:40 | 5, 9, 10, 11, 12, 13, 14 | 59.67d |  |  | Diogo | 20h | 100 |
| 16 | 1.2.9 | Relatorio de Especificacao de Requisitos | 4d | 2019-04-30 09:40 | 2019-05-02 14:40 | 5, 9, 10, 11, 12, 13, 14 | 59.67d |  |  | Daniel | 20h | 100 |
| 17 | 1.3 | **Build Phase** | 57.4d | 2019-05-06 09:00 | 2019-06-24 17:00 |  |  |  |  |  | 197.57h | 987.83 |
| 18 | 1.3.1 | Weekly Scrum 1 | 30min | 2019-05-06 09:00 | 2019-05-06 09:30 |  | 34.79d | 0d | start no earlier than 2019-05-06 09:00 | Daniel; Diogo | 1h | 5 |
| 19 | 1.3.2 | Weekly Scrum 2 | 30min | 2019-05-13 11:00 | 2019-05-13 11:30 | 18 | 48.41d | 7.3d | start no earlier than 2019-05-13 11:00 | Daniel; Diogo | 1h | 5 |
| 20 | 1.3.3 | Weekly Scrum 3 | 30min | 2019-05-20 08:00 | 2019-05-20 08:30 | 19 | 41.11d | 7.9d | start no earlier than 2019-05-20 08:00 | Daniel; Diogo | 1h | 5 |
| 21 | 1.3.4 | Weekly Scrum 4 | 30min | 2019-05-27 08:00 | 2019-05-27 08:30 | 20 | 33.21d | 7.9d | start no earlier than 2019-05-27 08:00 | Daniel; Diogo | 1h | 5 |
| 22 | 1.3.5 | Weekly Scrum 5 | 30min | 2019-06-03 08:00 | 2019-06-03 08:30 | 21 | 25.31d | 7.9d | start no earlier than 2019-06-03 08:00 | Daniel; Diogo | 1h | 5 |
| 23 | 1.3.6 | Weekly Scrum 6 | 30min | 2019-06-10 08:00 | 2019-06-10 08:30 | 22 | 17.41d | 7.9d | start no earlier than 2019-06-10 08:00 | Daniel; Diogo | 1h | 5 |
| 24 | 1.3.7 | Weekly Scrum 7 | 30min | 2019-06-17 08:00 | 2019-06-17 08:30 | 23 | 9.51d |  | start no earlier than 2019-06-17 08:00 | Daniel; Diogo | 1h | 5 |

| ID | WBS | Task | Duration | Start | Finish | Predecessors | Total slack | Free slack | Resources | Work | Cost |
| --- | --- | --- | --- | --- | --- | --- | --- | --- | --- | --- | --- |
| 25 | 1.3.8 | **Sprint 1 - Dia 05/05 até 27/05** | 12.91d | 2019-05-06 09:30 | 2019-05-16 10:02 |  | 34.59d | 10.99d |  | 99h | 495 |
| 26 | 1.3.8.1 | Planeamento da Sprint | 2h | 2019-05-06 09:30 | 2019-05-06 11:30 | 18 | 34.79d | 0d | Diogo; Daniel | 4h | 20 |
| 27 | 1.3.8.2 | **User Story 1 - Entity Framework** | 2d | 2019-05-06 11:30 | 2019-05-07 14:30 |  | 34.79d | 0d |  | 10h | 50 |
| 28 | 1.3.8.2.1 | Criação das Classes com a Entity Framework | 1.5d | 2019-05-06 11:30 | 2019-05-07 11:00 | 26 | 34.79d | 0d | Daniel | 7.5h | 37.5 |
| 29 | 1.3.8.2.2 | Ligação das Classes entre Si | 0.5d | 2019-05-07 11:00 | 2019-05-07 14:30 | 28 | 34.79d |  | Daniel | 2.5h | 12.5 |
| 30 | 1.3.8.3 | **User Story 2 - Form Menu_Inicial** | 1.8d | 2019-05-07 14:30 | 2019-05-08 15:30 |  | 34.79d | 0d |  | 9h | 45 |
| 31 | 1.3.8.3.1 | Criação do Form | 30min | 2019-05-07 14:30 | 2019-05-07 15:00 | 27 | 34.79d | 0d | Diogo | 0.5h | 2.5 |
| 32 | 1.3.8.3.2 | Criação do UI | 1h | 2019-05-07 15:00 | 2019-05-07 16:00 | 31 | 34.79d | 0d | Diogo | 1h | 5 |
| 33 | 1.3.8.3.3 | Implementar Codigo Necessário Para Transição de Forms | 1d | 2019-05-07 16:00 | 2019-05-08 12:00 | 32 | 34.79d | 0d | Diogo | 5h | 25 |
| 34 | 1.3.8.3.4 | Testar Funcionalidades | 2h | 2019-05-08 13:00 | 2019-05-08 15:00 | 33 | 34.79d | 0d | Diogo | 2h | 10 |
| 35 | 1.3.8.3.5 | Refatoração do Código | 30min | 2019-05-08 15:00 | 2019-05-08 15:30 | 34 | 34.79d |  | Diogo | 0.5h | 2.5 |
| 36 | 1.3.8.4 | **User Story 3 -> 8 - Form Gestao_Clientes** | 6.2d | 2019-05-08 15:30 | 2019-05-14 14:30 |  | 34.79d | 2.5d |  | 30.5h | 152.5 |
| 37 | 1.3.8.4.1 | **User Story 3 - Design do Form Gestao_Clientes** | 0.4d | 2019-05-08 15:30 | 2019-05-09 08:30 |  | 34.79d | 0d |  | 2h | 10 |
| 38 | 1.3.8.4.1.1 | Criação do Form | 30min | 2019-05-08 15:30 | 2019-05-08 16:00 | 30 | 34.79d | 0d | Diogo | 0.5h | 2.5 |
| 39 | 1.3.8.4.1.2 | Implementação do UI | 1h | 2019-05-08 16:00 | 2019-05-08 17:00 | 38 | 37.19d | 0d | Daniel | 1h | 5 |
| 40 | 1.3.8.4.1.3 | Implementar Butões Necessários | 30min | 2019-05-09 08:00 | 2019-05-09 08:30 | 39 | 37.19d |  | Daniel | 0.5h | 2.5 |
| 41 | 1.3.8.4.2 | **User Story 4 - Adicionar Cliente** | 1d | 2019-05-09 08:30 | 2019-05-09 14:30 |  | 37.19d | 0.9d |  | 5h | 25 |
| 42 | 1.3.8.4.2.1 | Implementação do código | 1d | 2019-05-09 08:30 | 2019-05-09 14:30 | 37 | 37.19d | 0d | Daniel | 5h | 25 |
| 43 | 1.3.8.4.3 | **User Story 5 - Editar Cliente** | 0.5d | 2019-05-09 14:30 | 2019-05-09 17:00 |  | 37.19d | 0.4d |  | 2.5h | 12.5 |
| 44 | 1.3.8.4.3.1 | Implementação do código | 0.5d | 2019-05-09 14:30 | 2019-05-09 17:00 | 42 | 37.19d | 0d | Daniel | 2.5h | 12.5 |
| 45 | 1.3.8.4.4 | **User Story 6 - Eliminar Cliente** | 0.4d | 2019-05-10 08:00 | 2019-05-10 10:00 |  | 37.19d | 0d |  | 2h | 10 |
| 46 | 1.3.8.4.4.1 | Verificação se o user pretende apagar os dados selecionados | 30min | 2019-05-10 08:00 | 2019-05-10 08:30 | 44 | 37.19d | 0d | Daniel | 0.5h | 2.5 |
| 47 | 1.3.8.4.4.2 | Implementação do código | 1.5h | 2019-05-10 08:30 | 2019-05-10 10:00 | 46 | 37.19d |  | Daniel | 1.5h | 7.5 |
| 48 | 1.3.8.4.5 | **User Story 7 - Guardar Dados Cliente** | 1d | 2019-05-10 10:00 | 2019-05-10 16:00 |  | 37.19d | 0d |  | 5h | 25 |
| 49 | 1.3.8.4.5.1 | Implementar ficheiro binário para guardar dados | 5h | 2019-05-10 10:00 | 2019-05-10 16:00 | 37, 41, 43, 45 | 37.19d |  | Daniel | 5h | 25 |

| ID | WBS | Task | Duration | Start | Finish | Predecessors | Total slack | Free slack | Constraint | Resources | Work | Cost |
| --- | --- | --- | --- | --- | --- | --- | --- | --- | --- | --- | --- | --- |
| 50 | 1.3.8.4.6 | **User Story 8 - Proteções e Correções de Erros** | 2.9d | 2019-05-10 16:00 | 2019-05-14 14:30 |  | 37.09d |  |  |  | 14h | 70 |
| 51 | 1.3.8.4.6.1 | Implementar proteções necessárias | 4h | 2019-05-10 16:00 | 2019-05-13 11:00 | 48 | 37.19d | 0.1d |  | Daniel | 4h | 20 |
| 52 | 1.3.8.4.6.2 | Garantir que os dados criados no Form são guardados | 1h | 2019-05-13 11:30 | 2019-05-13 13:30 | 51 | 37.09d | 0d | start no earlier than 2019-05-13 11:30 | Daniel | 1h | 5 |
| 53 | 1.3.8.4.6.3 | Testar Funcionalidades | 4h | 2019-05-13 13:30 | 2019-05-14 08:30 | 52 | 37.09d | 0d |  | Daniel | 4h | 20 |
| 54 | 1.3.8.4.6.4 | Correção de Bugs/Erros | 3h | 2019-05-14 08:30 | 2019-05-14 11:30 | 53 | 37.09d | 0d |  | Daniel | 3h | 15 |
| 55 | 1.3.8.4.6.5 | Refatoração do Código | 2h | 2019-05-14 11:30 | 2019-05-14 14:30 | 54 | 37.09d |  |  | Daniel | 2h | 10 |
| 56 | 1.3.8.5 | **User Story 9-20 - Form Gestão_Vendas** | 7.9d | 2019-05-08 16:00 | 2019-05-15 15:30 |  | 34.59d | 0.7d |  |  | 38.5h | 192.5 |
| 57 | 1.3.8.5.1 | **User Story 9 - Design do Form Gestao_Vendas** | 0.4d | 2019-05-08 16:00 | 2019-05-09 09:00 |  | 34.79d | 0d |  |  | 2h | 10 |
| 58 | 1.3.8.5.1.1 | Criação do Form | 30min | 2019-05-08 16:00 | 2019-05-08 16:30 | 38, 30 | 34.79d | 0d |  | Diogo | 0.5h | 2.5 |
| 59 | 1.3.8.5.1.2 | Implementação do UI | 1h | 2019-05-08 16:30 | 2019-05-09 08:30 | 58 | 34.79d | 0d |  | Diogo | 1h | 5 |
| 60 | 1.3.8.5.1.3 | Implementar Butões Necessários | 30min | 2019-05-09 08:30 | 2019-05-09 09:00 | 59 | 34.79d |  |  | Diogo | 0.5h | 2.5 |
| 61 | 1.3.8.5.2 | **User Story 10 - Adicionar Carro Vendido** | 1d | 2019-05-09 09:00 | 2019-05-09 15:00 |  | 34.79d | 0d |  |  | 5h | 25 |
| 62 | 1.3.8.5.2.1 | Implementação do código | 5h | 2019-05-09 09:00 | 2019-05-09 15:00 | 57 | 34.79d |  |  | Diogo | 5h | 25 |
| 63 | 1.3.8.5.3 | **User Story 11 - Editar Carro Vendido** | 0.8d | 2019-05-09 15:00 | 2019-05-10 10:00 |  | 34.79d | 0d |  |  | 4h | 20 |
| 64 | 1.3.8.5.3.1 | Implementação do código | 4h | 2019-05-09 15:00 | 2019-05-10 10:00 | 61 | 34.79d |  |  | Diogo | 4h | 20 |
| 65 | 1.3.8.5.4 | **User Story 12 - Eliminar Carro Vendido** | 0.5d | 2019-05-10 10:00 | 2019-05-10 13:30 |  | 34.79d | 0d |  |  | 2.5h | 12.5 |
| 66 | 1.3.8.5.4.1 | Verificação se o user pretende apagar os dados selecionados | 30min | 2019-05-10 10:00 | 2019-05-10 10:30 | 63 | 34.79d | 0d |  | Diogo | 0.5h | 2.5 |
| 67 | 1.3.8.5.4.2 | Implementação do código | 2h | 2019-05-10 10:30 | 2019-05-10 13:30 | 66 | 34.79d |  |  | Diogo | 2h | 10 |
| 68 | 1.3.8.5.5 | **User Story 13 - Listar Carros Vendidos** | 0.2d | 2019-05-10 13:30 | 2019-05-10 14:30 |  | 34.79d | 0d |  |  | 1h | 5 |
| 69 | 1.3.8.5.5.1 | Implementação do código | 1h | 2019-05-10 13:30 | 2019-05-10 14:30 | 57, 61, 63, 65 | 34.79d |  |  | Diogo | 1h | 5 |
| 70 | 1.3.8.5.6 | **User Story 14 - Listar Gastos e Total Gastos** | 0.2d | 2019-05-10 14:30 | 2019-05-10 15:30 |  | 34.79d | 0d |  |  | 1h | 5 |
| 71 | 1.3.8.5.6.1 | Implementação do código | 1h | 2019-05-10 14:30 | 2019-05-10 15:30 | 57, 61, 63, 65, 68 | 34.79d |  |  | Diogo | 1h | 5 |
| 72 | 1.3.8.5.7 | **User Story 15 - Listar Ganhos e Total Ganhos** | 0.2d | 2019-05-10 15:30 | 2019-05-10 16:30 |  | 34.79d | 0d |  |  | 1h | 5 |
| 73 | 1.3.8.5.7.1 | Implementação do código | 1h | 2019-05-10 15:30 | 2019-05-10 16:30 | 57, 61, 63, 65, 70 | 34.79d |  |  | Diogo | 1h | 5 |

| ID | WBS | Task | Duration | Start | Finish | Predecessors | Total slack | Free slack | Constraint | Resources | Work | Cost |
| --- | --- | --- | --- | --- | --- | --- | --- | --- | --- | --- | --- | --- |
| 74 | 1.3.8.5.8 | **User Story 16 - Listar Margem Lucro e Total Lucro** | 0.2d | 2019-05-10 16:30 | 2019-05-13 08:30 |  | 34.79d | 0d |  |  | 1h | 5 |
| 75 | 1.3.8.5.8.1 | Implementação do código | 1h | 2019-05-10 16:30 | 2019-05-13 08:30 | 57, 61, 63, 65, 72 | 34.79d |  |  | Diogo | 1h | 5 |
| 76 | 1.3.8.5.9 | **User Story 17 - Calcular Valor IVA** | 0.4d | 2019-05-13 08:30 | 2019-05-13 10:30 |  | 34.79d | 0.2d |  |  | 2h | 10 |
| 77 | 1.3.8.5.9.1 | Criação de metodo para realizar o calculo | 1.5h | 2019-05-13 08:30 | 2019-05-13 10:00 | 57, 61, 63, 65, 74 | 34.79d | 0d | start no earlier than 2019-05-13 08:30 | Diogo | 1.5h | 7.5 |
| 78 | 1.3.8.5.9.2 | Implementação do código | 30min | 2019-05-13 10:00 | 2019-05-13 10:30 | 77 | 34.79d |  |  | Diogo | 0.5h | 2.5 |
| 79 | 1.3.8.5.10 | **User Story 18 - Calcular Valor Desconto** | 0.4d | 2019-05-13 11:30 | 2019-05-13 14:30 |  | 34.59d | 0d |  |  | 2h | 10 |
| 80 | 1.3.8.5.10.1 | Criação de metodo para realizar o calculo | 1.5h | 2019-05-13 11:30 | 2019-05-13 14:00 | 57, 61, 63, 65, 76 | 34.59d | 0d | start no earlier than 2019-05-13 11:30 | Diogo | 1.5h | 7.5 |
| 81 | 1.3.8.5.10.2 | Implementação do código | 30min | 2019-05-13 14:00 | 2019-05-13 14:30 | 80 | 34.59d |  |  | Diogo | 0.5h | 2.5 |
| 82 | 1.3.8.5.11 | **User Story 19 - Calcular Valor Total Extras** | 0.4d | 2019-05-13 14:30 | 2019-05-13 16:30 |  | 34.59d | 0d |  |  | 2h | 10 |
| 83 | 1.3.8.5.11.1 | Criação de metodo para realizar o calculo | 1.5h | 2019-05-13 14:30 | 2019-05-13 16:00 | 57, 61, 63, 65, 68, 79 | 34.59d | 0d |  | Diogo | 1.5h | 7.5 |
| 84 | 1.3.8.5.11.2 | Implementação do código | 30min | 2019-05-13 16:00 | 2019-05-13 16:30 | 83 | 34.59d |  |  | Diogo | 0.5h | 2.5 |
| 85 | 1.3.8.5.12 | **User Story 20 - Proteções e Correções de Erros** | 3d | 2019-05-13 16:30 | 2019-05-15 15:30 |  | 34.59d | 0d |  |  | 15h | 75 |
| 86 | 1.3.8.5.12.1 | Garantir que os dados criados no Form são guardados | 1h | 2019-05-13 16:30 | 2019-05-14 08:30 | 57, 61, 63, 65, 68, 70, 72, 74, 76, 79, 82 | 34.59d | 0d |  | Diogo | 1h | 5 |
| 87 | 1.3.8.5.12.2 | Garantir que os dados anteriores são carregados | 1h | 2019-05-14 08:30 | 2019-05-14 09:30 | 86 | 34.59d | 0d |  | Diogo | 1h | 5 |
| 88 | 1.3.8.5.12.3 | Implementar proteções necessárias | 4h | 2019-05-14 09:30 | 2019-05-14 14:30 | 87 | 34.59d | 0d |  | Diogo | 4h | 20 |
| 89 | 1.3.8.5.12.4 | Testar Funcionalidades | 4h | 2019-05-14 14:30 | 2019-05-15 09:30 | 88 | 34.59d | 0d |  | Diogo | 4h | 20 |
| 90 | 1.3.8.5.12.5 | Correção de Bugs/Erros | 3h | 2019-05-15 09:30 | 2019-05-15 13:30 | 89 | 34.59d | 0d |  | Diogo | 3h | 15 |
| 91 | 1.3.8.5.12.6 | Refatoração do Código | 2h | 2019-05-15 13:30 | 2019-05-15 15:30 | 90 | 34.59d |  |  | Diogo | 2h | 10 |
| 92 | 1.3.8.6 | Revisão do Sprint | 2h | 2019-05-15 15:30 | 2019-05-16 08:30 | 85 | 34.59d | 0d |  | Daniel; Diogo | 4h | 20 |
| 93 | 1.3.8.7 | Retrospetiva do Sprint | 1h | 2019-05-16 08:30 | 2019-05-16 09:30 | 92 | 34.59d | 0d |  | Daniel; Diogo | 2h | 10 |
| 94 | 1.3.8.8 | Reunião Final Do Sprint | 30min | 2019-05-16 09:30 | 2019-05-16 10:00 | 93 | 34.59d | 0d |  | Daniel; Diogo | 1h | 5 |
| 95 | 1.3.8.9 | SPRINT 1 COMPLETO | 2min | 2019-05-16 10:00 | 2019-05-16 10:02 | 26, 27, 30, 36, 56, 92, 93, 94 | 34.59d |  |  |  |  |  |
| 96 | 1.3.9 | **Sprint 2 - Dia 27/05 até 19/06** | 11.41d | 2019-05-27 09:00 | 2019-06-05 10:02 |  |  |  |  |  | 84.5h | 422.5 |
| 97 | 1.3.9.1 | Planeamento da Sprint | 2h | 2019-05-27 09:00 | 2019-05-27 11:00 | 25 | 23.6d | 0d |  | Daniel; Diogo | 4h | 20 |

| ID | WBS | Task | Duration | Start | Finish | Predecessors | Total slack | Free slack | Resources | Work | Cost |
| --- | --- | --- | --- | --- | --- | --- | --- | --- | --- | --- | --- |
| 98 | 1.3.9.2 | **User Story 21 - 32 - Form Gestão_Oficina** | 8.9d | 2019-05-27 11:00 | 2019-06-03 16:30 |  | 23.6d |  |  | 44.5h | 222.5 |
| 99 | 1.3.9.2.1 | **User Story 21 - Design do Form Gestao_Vendas** | 0.4d | 2019-05-27 11:00 | 2019-05-27 14:00 |  | 23.6d | 0d |  | 2h | 10 |
| 100 | 1.3.9.2.1.1 | Criação do Form | 30min | 2019-05-27 11:00 | 2019-05-27 11:30 | 31, 38, 58, 97 | 23.6d | 0d | Diogo | 0.5h | 2.5 |
| 101 | 1.3.9.2.1.2 | Implentação do UI | 1h | 2019-05-27 11:30 | 2019-05-27 13:30 | 100 | 23.6d | 0d | Daniel | 1h | 5 |
| 102 | 1.3.9.2.1.3 | Implementar butões Necessários | 30min | 2019-05-27 13:30 | 2019-05-27 14:00 | 101 | 23.6d |  | Daniel | 0.5h | 2.5 |
| 103 | 1.3.9.2.2 | **User Story 22 - Adicionar Carro de Oficina** | 0.8d | 2019-05-27 14:00 | 2019-05-28 09:00 |  | 23.6d | 0d |  | 4h | 20 |
| 104 | 1.3.9.2.2.1 | Implementação do código | 4h | 2019-05-27 14:00 | 2019-05-28 09:00 | 99 | 23.6d |  | Daniel | 4h | 20 |
| 105 | 1.3.9.2.3 | **User Story 23 - Adicionar Serviços a um Carro** | 0.4d | 2019-05-28 09:00 | 2019-05-28 11:00 |  | 23.6d | 0d |  | 2h | 10 |
| 106 | 1.3.9.2.3.1 | Implementação do código | 2h | 2019-05-28 09:00 | 2019-05-28 11:00 | 103 | 23.6d |  | Daniel | 2h | 10 |
| 107 | 1.3.9.2.4 | **User Story 24 - Adicionar Parcela a Serviço** | 0.4d | 2019-05-28 11:00 | 2019-05-28 14:00 |  | 23.6d | 0d |  | 2h | 10 |
| 108 | 1.3.9.2.4.1 | Implementação do código | 2h | 2019-05-28 11:00 | 2019-05-28 14:00 | 105 | 23.6d |  | Daniel | 2h | 10 |
| 109 | 1.3.9.2.5 | **User Story 25- Apagar Carro de Oficina** | 0.5d | 2019-05-28 14:00 | 2019-05-28 16:30 |  | 23.6d | 0d |  | 2.5h | 12.5 |
| 110 | 1.3.9.2.5.1 | Verificação se o user pretende apagar os dados selecionados | 30min | 2019-05-28 14:00 | 2019-05-28 14:30 | 107 | 23.6d | 0d | Daniel | 0.5h | 2.5 |
| 111 | 1.3.9.2.5.2 | Implementação do código | 2h | 2019-05-28 14:30 | 2019-05-28 16:30 | 110 | 23.6d |  | Daniel | 2h | 10 |
| 112 | 1.3.9.2.6 | **User Story 26 - Eliminar Serviço do Carro** | 0.5d | 2019-05-28 16:30 | 2019-05-29 10:00 |  | 23.6d | 0d |  | 2.5h | 12.5 |
| 113 | 1.3.9.2.6.1 | Verificação se o user pretende apagar os dados selecionados | 30min | 2019-05-28 16:30 | 2019-05-28 17:00 | 109 | 23.6d | 0d | Daniel | 0.5h | 2.5 |
| 114 | 1.3.9.2.6.2 | Implementação do código | 2h | 2019-05-29 08:00 | 2019-05-29 10:00 | 113 | 23.6d |  | Daniel | 2h | 10 |
| 115 | 1.3.9.2.7 | **User Story 27 - Eliminar Parcela do Serviço** | 0.5d | 2019-05-29 10:00 | 2019-05-29 13:30 |  | 23.6d | 0d |  | 2.5h | 12.5 |
| 116 | 1.3.9.2.7.1 | Verificação se o user pretende apagar os dados selecionados | 30min | 2019-05-29 10:00 | 2019-05-29 10:30 | 112 | 23.6d | 0d | Daniel | 0.5h | 2.5 |
| 117 | 1.3.9.2.7.2 | Implementação do código | 2h | 2019-05-29 10:30 | 2019-05-29 13:30 | 116 | 23.6d |  | Daniel | 2h | 10 |
| 118 | 1.3.9.2.8 | **User Story 28 - Calcular Custo Total Carro** | 0.4d | 2019-05-29 13:30 | 2019-05-29 15:30 |  | 23.6d | 0d |  | 2h | 10 |
| 119 | 1.3.9.2.8.1 | Criação de metodo para realizar o calculo | 1.5h | 2019-05-29 13:30 | 2019-05-29 15:00 | 115 | 23.6d | 0d | Daniel | 1.5h | 7.5 |
| 120 | 1.3.9.2.8.2 | Implementação do código | 30min | 2019-05-29 15:00 | 2019-05-29 15:30 | 119 | 23.6d |  | Daniel | 0.5h | 2.5 |
| 121 | 1.3.9.2.9 | **User Story 29 - Calcular Custo Total Serviço** | 0.4d | 2019-05-29 15:30 | 2019-05-30 08:30 |  | 23.6d | 0d |  | 2h | 10 |
| 122 | 1.3.9.2.9.1 | Criação de metodo para realizar o calculo | 1.5h | 2019-05-29 15:30 | 2019-05-29 17:00 | 118 | 23.6d | 0d | Daniel | 1.5h | 7.5 |
| 123 | 1.3.9.2.9.2 | Implementação do código | 30min | 2019-05-30 08:00 | 2019-05-30 08:30 | 122 | 23.6d |  | Daniel | 0.5h | 2.5 |

| ID | WBS | Task | Duration | Start | Finish | Predecessors | Total slack | Free slack | Resources | Work | Cost |
| --- | --- | --- | --- | --- | --- | --- | --- | --- | --- | --- | --- |
| 124 | 1.3.9.2.10 | **User Story 30 - Calcular Custo Total Cliente** | 0.4d | 2019-05-30 08:30 | 2019-05-30 10:30 |  | 23.6d | 0d |  | 2h | 10 |
| 125 | 1.3.9.2.10.1 | Criação de metodo para realizar o calculo | 1.5h | 2019-05-30 08:30 | 2019-05-30 10:00 | 121 | 23.6d | 0d | Daniel | 1.5h | 7.5 |
| 126 | 1.3.9.2.10.2 | Implementação do código | 30min | 2019-05-30 10:00 | 2019-05-30 10:30 | 125 | 23.6d |  | Daniel | 0.5h | 2.5 |
| 127 | 1.3.9.2.11 | **User Story 31 - Emitir Fatura por Serviço** | 1.4d | 2019-05-30 10:30 | 2019-05-31 09:30 |  | 23.6d | 0d |  | 7h | 35 |
| 128 | 1.3.9.2.11.1 | Carregar todos os dados relativos ao serviço | 2h | 2019-05-30 10:30 | 2019-05-30 13:30 | 99, 103, 105, 107, 109, 115, 118, 121, 124 | 23.6d | 0d | Daniel | 2h | 10 |
| 129 | 1.3.9.2.11.2 | Implementar código para emitir fatura | 5h | 2019-05-30 13:30 | 2019-05-31 09:30 | 128 | 23.6d |  | Daniel | 5h | 25 |
| 130 | 1.3.9.2.12 | **User Story 32 - Proteções e Correções de Bugs** | 2.8d | 2019-05-31 09:30 | 2019-06-03 16:30 |  | 23.6d |  |  | 14h | 70 |
| 131 | 1.3.9.2.12.1 | Garantir que os dados anteriores são carregados | 1h | 2019-05-31 09:30 | 2019-05-31 10:30 | 127 | 23.6d | 0d | Daniel | 1h | 5 |
| 132 | 1.3.9.2.12.2 | Garantir que os dados criados no Form são guardados | 1h | 2019-05-31 10:30 | 2019-05-31 11:30 | 131 | 23.6d | 0d | Daniel | 1h | 5 |
| 133 | 1.3.9.2.12.3 | Implementar Proteções Necessárias | 4h | 2019-05-31 11:30 | 2019-05-31 16:30 | 132 | 23.6d | 0d | Daniel | 4h | 20 |
| 134 | 1.3.9.2.12.4 | Testar Funcionalidades | 3h | 2019-05-31 16:30 | 2019-06-03 10:30 | 133 | 23.6d | 0d | Daniel | 3h | 15 |
| 135 | 1.3.9.2.12.5 | Correção de Bugs/Erros | 3h | 2019-06-03 10:30 | 2019-06-03 14:30 | 134 | 23.6d | 0d | Daniel | 3h | 15 |
| 136 | 1.3.9.2.12.6 | Refatoração do Código | 2h | 2019-06-03 14:30 | 2019-06-03 16:30 | 135 | 23.6d |  | Daniel | 2h | 10 |
| 137 | 1.3.9.3 | **User Story 33 - 40 - Form Gestão_Aluguer** | 7.2d | 2019-05-27 11:30 | 2019-05-31 16:30 |  | 24.99d |  |  | 36h | 180 |
| 138 | 1.3.9.3.1 | **User Story 33 - Design form Gestao_Aluguer** | 0.4d | 2019-05-27 11:30 | 2019-05-27 14:30 |  | 24.99d | 0d |  | 2h | 10 |
| 139 | 1.3.9.3.1.1 | Criação do Form | 30min | 2019-05-27 11:30 | 2019-05-27 12:00 | 31, 38, 58, 100 | 24.49d | 0d | Diogo | 0.5h | 2.5 |
| 140 | 1.3.9.3.1.2 | Implentação do UI | 1h | 2019-05-27 13:00 | 2019-05-27 14:00 | 139 | 24.99d | 0d | Diogo | 1h | 5 |
| 141 | 1.3.9.3.1.3 | Implementar butões Necessários | 30min | 2019-05-27 14:00 | 2019-05-27 14:30 | 140 | 24.49d |  | Diogo | 0.5h | 2.5 |
| 142 | 1.3.9.3.2 | **User Story 34 - Adicionar Carro de Aluguer** | 0.8d | 2019-05-27 14:30 | 2019-05-28 09:30 |  | 24.99d | 0d |  | 4h | 20 |
| 143 | 1.3.9.3.2.1 | Implementação do código | 4h | 2019-05-27 14:30 | 2019-05-28 09:30 | 138 | 24.49d |  | Diogo | 4h | 20 |
| 144 | 1.3.9.3.3 | **User Story 35 - Eliminar Carro de Aluguer** | 0.4d | 2019-05-28 09:30 | 2019-05-28 11:30 |  | 24.99d | 0d |  | 2h | 10 |
| 145 | 1.3.9.3.3.1 | Verificação se o user pretende apagar os dados selecionados | 30min | 2019-05-28 09:30 | 2019-05-28 10:00 | 142 | 24.49d | 0d | Diogo | 0.5h | 2.5 |
| 146 | 1.3.9.3.3.2 | Implementação do código | 1.5h | 2019-05-28 10:00 | 2019-05-28 11:30 | 145 | 24.49d |  | Diogo | 1.5h | 7.5 |
| 147 | 1.3.9.3.4 | **User Story 36 - Atribuir Carro de Aluguer a Cliente** | 0.6d | 2019-05-28 11:30 | 2019-05-28 15:30 |  | 24.99d | 0d |  | 3h | 15 |
| 148 | 1.3.9.3.4.1 | Implementação do código | 3h | 2019-05-28 11:30 | 2019-05-28 15:30 | 144 | 24.49d |  | Diogo | 3h | 15 |

| ID | WBS | Task | Duration | Start | Finish | Predecessors | Total slack | Free slack | Constraint | Resources | Work | Cost |
| --- | --- | --- | --- | --- | --- | --- | --- | --- | --- | --- | --- | --- |
| 149 | 1.3.9.3.5 | **User Story 37 - Calcular Kilometros Percorridos** | 0.4d | 2019-05-28 15:30 | 2019-05-29 08:30 |  | 24.99d | 0d |  |  | 2h | 10 |
| 150 | 1.3.9.3.5.1 | Criação de metodo para realizar o calculo | 1.5h | 2019-05-28 15:30 | 2019-05-28 17:00 | 147 | 24.49d | 0d |  | Diogo | 1.5h | 7.5 |
| 151 | 1.3.9.3.5.2 | Implementação do código | 30min | 2019-05-29 08:00 | 2019-05-29 08:30 | 150 | 24.99d |  |  | Diogo | 0.5h | 2.5 |
| 152 | 1.3.9.3.6 | **User Story 38 - Calcular Valor a Pagar** | 0.4d | 2019-05-29 08:30 | 2019-05-29 10:30 |  | 24.99d | 0d |  |  | 2h | 10 |
| 153 | 1.3.9.3.6.1 | Criação de metodo para realizar o calculo | 1.5h | 2019-05-29 08:30 | 2019-05-29 10:00 | 149 | 24.49d | 0d |  | Diogo | 1.5h | 7.5 |
| 154 | 1.3.9.3.6.2 | Implementação do código | 30min | 2019-05-29 10:00 | 2019-05-29 10:30 | 153 | 24.49d |  |  | Diogo | 0.5h | 2.5 |
| 155 | 1.3.9.3.7 | **User Story 39 - Emitir Fatura de Aluguer** | 1.4d | 2019-05-29 10:30 | 2019-05-30 09:30 |  | 24.99d | 0d |  |  | 7h | 35 |
| 156 | 1.3.9.3.7.1 | Carregar todos os dados relativos ao Aluguer | 2h | 2019-05-29 10:30 | 2019-05-29 13:30 | 138, 142, 144, 147, 149, 152 | 24.49d | 0d |  | Diogo | 2h | 10 |
| 157 | 1.3.9.3.7.2 | Implementar código para emitir fatura | 5h | 2019-05-29 13:30 | 2019-05-30 09:30 | 156 | 24.49d |  |  | Diogo | 5h | 25 |
| 158 | 1.3.9.3.8 | **User Story 40- Proteções e Correções de Erros** | 2.8d | 2019-05-30 09:30 | 2019-05-31 16:30 |  | 24.99d | 1.7d |  |  | 14h | 70 |
| 159 | 1.3.9.3.8.1 | Garantir que os dados anteriores são carregados | 1h | 2019-05-30 09:30 | 2019-05-30 10:30 | 155 | 24.49d | 0d |  | Diogo | 1h | 5 |
| 160 | 1.3.9.3.8.2 | Garantir que os dados criados no Form são guardados | 1h | 2019-05-30 10:30 | 2019-05-30 11:30 | 159 | 24.49d | 0d |  | Diogo | 1h | 5 |
| 161 | 1.3.9.3.8.3 | Implementar Proteções Necessárias | 4h | 2019-05-30 11:30 | 2019-05-30 16:30 | 160 | 24.49d | 0d |  | Diogo | 4h | 20 |
| 162 | 1.3.9.3.8.4 | Testar Funcionalidades | 3h | 2019-05-30 16:30 | 2019-05-31 10:30 | 161 | 24.49d | 0d |  | Diogo | 3h | 15 |
| 163 | 1.3.9.3.8.5 | Correção de Bugs/Erros | 3h | 2019-05-31 10:30 | 2019-05-31 14:30 | 162 | 24.49d | 0d |  | Diogo | 3h | 15 |
| 164 | 1.3.9.3.8.6 | Refatoração do Código | 2h | 2019-05-31 14:30 | 2019-05-31 16:30 | 163 | 24.49d |  |  | Diogo | 2h | 10 |
| 165 | 1.3.10 | Revisão do Sprint | 2h | 2019-06-04 08:00 | 2019-06-04 10:00 | 138, 142, 144, 147, 149, 152, 155, 158 | 23.29d | 0d | start no earlier than 2019-06-04 08:00 | Daniel; Diogo | 4h | 20 |
| 166 | 1.3.11 | Retrospetiva do Sprint | 1h | 2019-06-04 10:00 | 2019-06-04 11:00 | 165 | 23.29d | 0d |  | Daniel; Diogo | 2h | 10 |
| 167 | 1.3.12 | Reunião Final Do Sprint | 30min | 2019-06-04 11:00 | 2019-06-04 11:30 | 166 | 23.29d | 0d |  | Daniel; Diogo | 1h | 5 |
| 168 | 1.3.13 | SPRINT 2 COMPLETO | 2min | 2019-06-04 11:30 | 2019-06-04 11:32 | 167 | 23.29d |  |  | Daniel; Diogo | 0.07h | 0.33 |
| 169 | 1.4 | **Conclusão do Projeto** | 0.5d | 2019-06-05 10:02 | 2019-06-05 13:32 |  | 21.49d |  |  | Daniel; Diogo | 10h | 50 |
| 170 | 1.4.1 | Reunião Final Projeto | 2h | 2019-06-05 10:02 | 2019-06-05 13:02 | 25, 96 | 21.49d | 0d |  | Daniel; Diogo | 4h | 20 |
| 171 | 1.4.2 | Conclusões sobre os Erros Cometidos | 30min | 2019-06-05 13:02 | 2019-06-05 13:32 | 170 | 21.49d |  |  | Daniel; Diogo | 1h | 5 |
| 172 | 2 | Projeto Concluido | 2min | 2019-06-25 08:00 | 2019-06-25 08:02 | 2, 4, 17, 169 | 0d |  |  | Daniel; Diogo | 0.07h | 0.33 |
